# 计划

Schedule from MS Project, 2021-03-01 to 2021-09-06, status date 2021-03-01, A marks actual dates.
Microsoft

## Calendars

- 标准: Mon-Fri 08:00-12:00, 13:00-17:00; Sat-Sun off.

## Resources

| Resource |
| --- |
| 架构师 |
| 开发人员A |
| 开发人员B |
| 开发人员C |
| 开发人员D |
| 开发人员E |
| 开发人员F |
| 开发人员G |
| 开发人员H |
| 开发人员I |
| 测试人员A |
| 测试人员B |
| 测试人员C |

## Schedule

| ID | Task | Type | Duration | Start | Finish | Predecessors | Complete | Remaining | Constraint | Resources | Work | Actual work |
| --- | --- | --- | --- | --- | --- | --- | --- | --- | --- | --- | --- | --- |
| 1 | 需求说明 | manual | 4d | 2021-03-01 A | 2021-03-04 A |  | 100% |  |  | 架构师; 开发人员A | 32h | 32h |
| 2 | 需求说明优化 | manual | 3d | 2021-03-08 A | 2021-03-10 | 1 | 67% | 1d |  | 架构师; 开发人员A; 测试人员A | 40h | 16h |
| 3 | 任务分配下发 | manual | 2d | 2021-03-11 A | 2021-03-15 | 2 | 50% | 1d |  |  |  |  |
| 4 | 数据规范 | manual | 3d | 2021-03-15 | 2021-03-18 | 3 |  |  |  | 架构师 | 24h |  |
| 5 | UI | manual | 10d | 2021-03-15 | 2021-03-29 | 3 |  |  |  | 开发人员I; 开发人员G; 开发人员H; 测试人员C | 320h |  |
| 6 | 基本数据处理功能完成 | manual | 15d | 2021-03-15 | 2021-04-05 | 3 |  |  |  | 开发人员A; 开发人员B; 开发人员C; 开发人员D; 开发人员E; 开发人员F | 720h |  |
| 7 | 测试、完成功能优化 | manual | 3d | 2021-04-19 | 2021-04-22 | 6, 4 |  |  | start no earlier than 2021-04-19 | 测试人员A; 测试人员B; 开发人员A; 开发人员B; 开发人员C; 开发人员D; 开发人员E; 开发人员F | 192h |  |
| 8 | 管理功能完成 | manual | 10d | 2021-04-27 A | 2021-05-11 | 7 | 40% | 6d | start no earlier than 2021-04-27 | 开发人员I; 开发人员H; 开发人员D; 开发人员A; 开发人员B; 开发人员C; 开发人员E; 开发人员F; 开发人员G | 464h | 32h |
| 9 | 测试、管理功能优化 | manual | 3d | 2021-05-18 | 2021-05-20 | 8 |  |  |  | 测试人员A; 测试人员B; 测试人员C; 开发人员A; 开发人员B; 开发人员C; 开发人员D; 开发人员E; 开发人员F; 开发人员G; 开发人员H; 开发人员I | 288h |  |
| 10 | 分析功能完成 | manual | 15d | 2021-05-24 | 2021-06-11 | 9 |  |  | finish no earlier than 2021-05-17 | 开发人员A; 开发人员B; 开发人员C; 开发人员D; 开发人员E; 开发人员F; 开发人员G; 开发人员H; 开发人员I | 1080h |  |
| 11 | 测试、分析功能优化 | manual | 4d | 2021-06-21 | 2021-06-24 | 10 |  |  |  | 开发人员E; 开发人员A; 开发人员B; 开发人员C; 开发人员D; 开发人员F; 开发人员G; 开发人员H; 开发人员I; 测试人员A; 测试人员B; 测试人员C | 384h |  |
| 12 | 项目测试 | manual | 2d | 2021-06-29 | 2021-06-30 | 11, 5 |  |  |  | 测试人员B; 测试人员A; 测试人员C; 开发人员A; 开发人员D; 开发人员G | 96h |  |
| 13 | 项目调整优化 | manual | 10d | 2021-07-02 | 2021-07-15 | 12 |  |  |  | 测试人员A; 测试人员B; 测试人员C; 开发人员B; 开发人员C; 开发人员E; 开发人员F; 开发人员H; 开发人员I | 720h |  |
| 14 | 安装调试I期 | manual | 2d | 2021-07-20 | 2021-07-21 | 13 |  |  |  | 开发人员A; 开发人员D; 开发人员G | 48h |  |
| 15 | 项目优化 | manual | 10d | 2021-07-23 | 2021-08-05 | 14 |  |  |  | 架构师; 测试人员A; 测试人员B; 测试人员C; 开发人员A; 开发人员B; 开发人员C; 开发人员D; 开发人员E; 开发人员F; 开发人员G; 开发人员H; 开发人员I | 1040h |  |
| 16 | 调试II期 | manual | 1d | 2021-08-10 | 2021-08-10 | 15 |  |  |  | 开发人员A; 开发人员D; 开发人员G; 测试人员A | 32h |  |
| 17 | 项目优化 | manual | 7d | 2021-08-11 | 2021-08-19 | 16 |  |  |  | 测试人员C; 测试人员A; 测试人员B; 架构师; 开发人员A; 开发人员B; 开发人员C; 开发人员D; 开发人员E; 开发人员F; 开发人员G; 开发人员H; 开发人员I | 728h |  |
| 18 | 验收 | manual | 2d | 2021-08-24 | 2021-08-25 | 17 |  |  |  |  |  |  |
| 19 | 正式交付 | manual | 7d | 2021-08-26 | 2021-09-06 | 18 |  |  | start no earlier than 2021-08-26 |  |  |  |
